# JVK_s5310988

Schedule from MS Project, 2023-09-04 to 2024-02-02, costs in £.

## Calendars

- Standard: Mon-Fri 08:00-12:00, 13:00-17:00; Sat-Sun off. Exceptions (off unless hours are given): 2023-12-25 (Christmas Day), 2023-12-26 (Boxing Day), 2024-01-01 to 2024-01-02 (New Years Day).

## Resources

| Resource | Group | Rate | Cost per use |
| --- | --- | --- | --- |
| Managing Director | Staff | 27.36 |  |
| Technical Director | Staff | 24.62 |  |
| Financial Assisstant | Staff | 13.68 |  |
| Lead Developer | Staff | 21.88 |  |
| Comercial Lawyer | Freelancer | 43.12 |  |
| 3D Artist and Modeler | Staff | 16.15 |  |
| 2D/3D Artist and GUI Designer | Staff | 16.98 |  |
| Sound Designer | Freelancer | 153 |  |
| Voice Actor | Freelancer | 18.62 |  |
| Videography Company | Freelancer | 171.88 |  |
| Junior Developer 1 | Staff | 14.77 |  |
| Junior Developer 2 | Staff | 14.22 |  |
| Staff Meeting | Staff |  | 160.83 |
| Travel | Travel |  | 47.3 |
| Teacher |  | 17.5 |  |
| External Editor | Freelancer | 18.5 |  |
| Senori Independent QA 1 | Freelancer | 21 |  |
| Senori Independent QA 2 | Freelancer | 21 |  |
| Senori Independent QA 3 | Freelancer | 21 |  |
| Script Writer | Freelancer | 46 |  |

## Schedule

| ID | WBS | Task | Type | Duration | Start | Finish | Predecessors | Total slack | Free slack | Resources | Work | Cost |
| --- | --- | --- | --- | --- | --- | --- | --- | --- | --- | --- | --- | --- |
| 1 | 0 | **Roar** |  | 106d | 2023-09-04 | 2024-02-02 |  |  |  |  | 2012h | 57,933.05 |
| 2 | 1 | **Project Management and Planning** |  | 20d | 2023-09-04 | 2023-09-29 |  | 1d | 0d |  | 312h | 8,405.62 |
| 3 | 1.1 | **Team/People** |  | 6d | 2023-09-04 | 2023-09-11 |  | 1d |  |  | 64h | 1,663.23 |
| 4 | 1.1.1 | Project Roles + Form Team |  | 2d | 2023-09-04 | 2023-09-05 |  | 2d | 1d | Managing Director; Technical Director | 32h | 831.62 |
| 5 | 1.1.2 | Recruit Freelancers |  | 1d | 2023-09-07 | 2023-09-07 | 4, 150 | 1d | 0d | Managing Director; Technical Director | 16h | 415.81 |
| 6 | 1.1.3 | Agree salary & fees |  | 1d | 2023-09-11 | 2023-09-11 | 8 | 1d | 0d | Managing Director; Technical Director | 16h | 415.81 |
| 7 | 1.2 | **Product Scope** |  | 7d | 2023-09-08 | 2023-09-18 | 5 | 1d | 0d |  | 120h | 2,949.92 |
| 8 | 1.2.1 | Design the Technical Spec |  | 1d | 2023-09-08 | 2023-09-08 |  | 1d | 0d | Managing Director; Technical Director; Lead Developer | 24h | 590.88 |
| 9 | 1.2.2 | Design Creative Spec |  | 2d | 2023-09-12 | 2023-09-13 | 6 | 1d | 0d | Managing Director; Technical Director; Teacher | 48h | 1,111.62 |
| 10 | 1.2.3 | Secure Client Agreement |  | 1d | 2023-09-14 | 2023-09-14 | 9 | 1d | 0d | Managing Director; Technical Director | 16h | 415.81 |
| 11 | 1.2.4 | Final Specification |  | 2d | 2023-09-15 | 2023-09-18 | 10 | 1d |  | Managing Director; Technical Director | 32h | 831.62 |
| 12 | 1.3 | **Project Planning** |  | 4d | 2023-09-19 | 2023-09-22 | 7 | 1d | 0d |  | 48h | 1,269.31 |
| 13 | 1.3.1 | Create WBS |  | 1d | 2023-09-19 | 2023-09-19 |  | 1d | 0d | Managing Director | 8h | 218.85 |
| 14 | 1.3.2 | Define Resources and Tasks |  | 2d | 2023-09-20 | 2023-09-21 | 13 | 1d | 0d | Managing Director; Technical Director | 32h | 831.62 |
| 15 | 1.3.3 | Build Project Schedule |  | 1d | 2023-09-22 | 2023-09-22 | 14 | 1d |  | Managing Director | 8h | 218.85 |
| 16 | 1.4 | **Commercial Activities** |  | 5d | 2023-09-25 | 2023-09-29 | 12 | 1d |  |  | 80h | 2,523.15 |
| 17 | 1.4.1 | **Legal / Compliance** |  | 3d | 2023-09-26 | 2023-09-28 | 21 | 1d | 0d |  | 48h | 1,691.54 |
| 18 | 1.4.1.1 | Commercial Contract |  | 1d | 2023-09-26 | 2023-09-26 | 150 | 1d | 0d | Comercial Lawyer; Managing Director | 16h | 563.85 |
| 19 | 1.4.1.2 | IP & copyright |  | 1d | 2023-09-27 | 2023-09-27 | 18 | 1d | 0d | Comercial Lawyer; Managing Director | 16h | 563.85 |
| 20 | 1.4.1.3 | NDA for Staff & Freelancer |  | 1d | 2023-09-28 | 2023-09-28 | 19 | 1d |  | Comercial Lawyer; Managing Director | 16h | 563.85 |
| 21 | 1.4.2 | **Budget** |  | 1d | 2023-09-25 | 2023-09-25 |  | 1d | 0d |  | 16h | 415.81 |
| 22 | 1.4.2.1 | Agree Budget |  | 1d | 2023-09-25 | 2023-09-25 |  | 1d | 0d | Managing Director; Technical Director | 16h | 415.81 |
| 23 | 1.4.2.2 | Monitor Budget and Take Action | milestone | 0d | 2023-09-25 | 2023-09-25 | 22 | 1d |  | Financial Assisstant [20%] |  |  |
| 24 | 1.5 | **Management & Monitoring** |  | 1d | 2023-09-28 | 2023-09-29 | 17 | 1d |  |  | 16h | 415.81 |
| 25 | 1.5.1 | Monthly Meetings at Longleat | milestone | 0d | 2023-09-28 | 2023-09-28 |  | 1d | 0d | Managing Director |  |  |
| 26 | 1.5.2 | Team Meetings & Progress Checks | milestone | 0d | 2023-09-29 | 2023-09-29 | 27 | 1d |  | Managing Director; Technical Director; Lead Developer; 3D Artist and Modeler; 2D/3D Artist and GUI Designer; Junior Developer 1; Junior Developer 2 |  |  |
| 27 | 1.5.3 | Baseline Project Plan Monitoring |  | 1d | 2023-09-29 | 2023-09-29 | 25 | 1d | 0d | Managing Director; Technical Director | 16h | 415.81 |

| ID | WBS | Task | Duration | Start | Finish | Predecessors | Total slack | Free slack | Resources | Work | Cost |
| --- | --- | --- | --- | --- | --- | --- | --- | --- | --- | --- | --- |
| 28 | 2 | **Content and Assets** | 40d | 2023-10-02 | 2023-11-24 | 2 | 1d | 0d |  | 696h | 26,012.58 |
| 29 | 2.1 | **2D ART** | 14d | 2023-10-02 | 2023-10-19 |  | 12d |  |  | 104h | 1,765.9 |
| 30 | 2.1.1 | Product logo | 0.5d | 2023-10-02 | 2023-10-02 |  | 12d | 0d | 2D/3D Artist and GUI Designer | 4h | 67.92 |
| 31 | 2.1.2 | Characters for big cats on the run | 2.5d | 2023-10-02 | 2023-10-04 | 30 | 12d | 0d | 2D/3D Artist and GUI Designer | 20h | 339.6 |
| 32 | 2.1.3 | **Map of Park** | 10d | 2023-10-05 | 2023-10-18 | 31 | 12d | 0d |  | 72h | 1,222.55 |
| 33 | 2.1.3.1 | Interactive Landscape | 4d | 2023-10-05 | 2023-10-11 |  | 12d | 0d | 2D/3D Artist and GUI Designer | 32h | 543.35 |
| 34 | 2.1.3.2 | Define Design / Art Format | 2d | 2023-10-12 | 2023-10-13 | 33 | 12d | 0d | 2D/3D Artist and GUI Designer | 16h | 271.68 |
| 35 | 2.1.3.3 | Images + fact signpost | 3d | 2023-10-16 | 2023-10-18 | 34 | 12d |  | 2D/3D Artist and GUI Designer | 24h | 407.52 |
| 36 | 2.1.4 | **Lion Mascot** | 1d | 2023-10-19 | 2023-10-19 | 32 | 12d |  |  | 8h | 135.84 |
| 37 | 2.1.4.1 | Create UI | 1d | 2023-10-19 | 2023-10-19 |  | 12d | 0d | 2D/3D Artist and GUI Designer | 8h | 135.84 |
| 38 | 2.2 | **Modelling for animation** | 26d | 2023-10-02 | 2023-11-06 |  | 1d |  |  | 208h | 3,360.1 |
| 39 | 2.2.1 | Interactive map map elements | 2d | 2023-10-02 | 2023-10-03 |  | 1d | 0d | 3D Artist and Modeler | 16h | 258.47 |
| 40 | 2.2.2 | **big cat models** | 24d | 2023-10-04 | 2023-11-06 | 24 | 1d | 0d |  | 192h | 3,101.63 |
| 41 | 2.2.2.1 | **3D Models** | 12d | 2023-10-04 | 2023-10-19 |  | 1d | 0d |  | 96h | 1,550.82 |
| 42 | 2.2.2.1.1 | Male Lion | 3d | 2023-10-04 | 2023-10-06 | 39 | 1d | 0d | 3D Artist and Modeler | 24h | 387.7 |
| 43 | 2.2.2.1.2 | Female Lion | 3d | 2023-10-09 | 2023-10-11 | 42 | 1d | 0d | 3D Artist and Modeler | 24h | 387.7 |
| 44 | 2.2.2.1.3 | Tiger | 3d | 2023-10-12 | 2023-10-16 | 43 | 1d | 0d | 3D Artist and Modeler | 24h | 387.7 |
| 45 | 2.2.2.1.4 | Cheetah | 3d | 2023-10-17 | 2023-10-19 | 44 | 1d |  | 3D Artist and Modeler | 24h | 387.7 |
| 46 | 2.2.2.2 | **Animate Models** | 12d | 2023-10-20 | 2023-11-06 | 41 | 1d |  |  | 96h | 1,550.82 |
| 47 | 2.2.2.2.1 | Male Lion | 3d | 2023-10-20 | 2023-10-24 |  | 1d | 0d | 3D Artist and Modeler | 24h | 387.7 |
| 48 | 2.2.2.2.2 | Female Lion | 3d | 2023-10-25 | 2023-10-27 | 47 | 1d | 0d | 3D Artist and Modeler | 24h | 387.7 |
| 49 | 2.2.2.2.3 | Tiger | 3d | 2023-10-30 | 2023-11-01 | 48 | 1d | 0d | 3D Artist and Modeler | 24h | 387.7 |
| 50 | 2.2.2.2.4 | Cheetah | 3d | 2023-11-02 | 2023-11-06 | 49 | 1d | 0d | 3D Artist and Modeler | 24h | 387.7 |
| 51 | 2.3 | **Level Design** | 17d | 2023-10-20 | 2023-11-13 | 37 | 5d |  |  | 120h | 2,004.56 |
| 52 | 2.3.1 | Game Level 1 | 5d | 2023-10-20 | 2023-10-26 |  | 12d | 0d | 2D/3D Artist and GUI Designer | 40h | 679.19 |
| 53 | 2.3.2 | Game Level 2 | 5d | 2023-10-27 | 2023-11-02 | 52 | 12d | 7d | 2D/3D Artist and GUI Designer | 40h | 679.19 |
| 54 | 2.3.3 | Game Level 3 | 5d | 2023-11-07 | 2023-11-13 | 50 | 5d | 0d | 3D Artist and Modeler | 40h | 646.17 |

| ID | WBS | Task | Duration | Start | Finish | Predecessors | Total slack | Free slack | Resources | Work | Cost |
| --- | --- | --- | --- | --- | --- | --- | --- | --- | --- | --- | --- |
| 55 | 2.4 | **Audio** | 10d | 2023-10-02 | 2023-10-13 |  | 18d |  |  | 120h | 13,405 |
| 56 | 2.4.1 | **Music** | 3d | 2023-10-02 | 2023-10-04 |  | 18d | 0d |  | 24h | 3,672 |
| 57 | 2.4.1.1 | Music for game | 3d | 2023-10-02 | 2023-10-04 |  | 18d |  | Sound Designer | 24h | 3,672 |
| 58 | 2.4.2 | **Lion Mascot** | 3d | 2023-10-03 | 2023-10-05 |  | 41d |  |  | 40h | 1,165 |
| 59 | 2.4.2.1 | Write Lines | 2d | 2023-10-03 | 2023-10-04 | 66 | 41d | 0d | Teacher; Script Writer | 32h | 1,016 |
| 60 | 2.4.2.2 | Create Voice lines/Text | 1d | 2023-10-05 | 2023-10-05 | 59 | 41d |  | Voice Actor | 8h | 149 |
| 61 | 2.4.3 | **SFX** | 7d | 2023-10-05 | 2023-10-13 | 56 | 18d | 0d |  | 56h | 8,568 |
| 62 | 2.4.3.1 | SFX for game | 3d | 2023-10-05 | 2023-10-09 |  | 18d | 0d | Sound Designer | 24h | 3,672 |
| 63 | 2.4.3.2 | SFX for map | 1d | 2023-10-10 | 2023-10-10 | 62 | 18d | 0d | Sound Designer | 8h | 1,224 |
| 64 | 2.4.3.3 | SFX for models | 3d | 2023-10-11 | 2023-10-13 | 63 | 18d | 0d | Sound Designer | 24h | 3,672 |
| 65 | 2.5 | **Video** | 3d | 2023-10-02 | 2023-10-04 | 9 | 39.5d |  |  | 40h | 3,256.85 |
| 66 | 2.5.1 | Plan + script | 1d | 2023-10-02 | 2023-10-02 | 2 | 39.5d | 0d | Videography Company; Teacher; Managing Director | 24h | 1,733.85 |
| 67 | 2.5.2 | Longleat shoot | 1d | 2023-10-03 | 2023-10-03 | 66 | 39.5d | 0d | Videography Company | 8h | 1,375 |
| 68 | 2.5.3 | Editing post prod | 1d | 2023-10-04 | 2023-10-04 | 67 | 39.5d | 2d | External Editor | 8h | 148 |
| 69 | 2.6 | **UI** | 9d | 2023-11-14 | 2023-11-24 | 54 | 5d |  |  | 104h | 2,220.18 |
| 70 | 2.6.1 | Design Choices | 2d | 2023-11-14 | 2023-11-15 | 53 | 5d | 0d | Managing Director; 2D/3D Artist and GUI Designer | 32h | 709.37 |
| 71 | 2.6.2 | User Feedback | 2d | 2023-11-16 | 2023-11-17 | 70 | 5d | 0d | Managing Director; Technical Director | 32h | 831.62 |
| 72 | 2.6.3 | Create UI | 5d | 2023-11-20 | 2023-11-24 | 71 | 5d |  | 2D/3D Artist and GUI Designer | 40h | 679.19 |
| 73 | 3 | **Programming and development** | 59d | 2023-09-11 | 2023-11-30 |  | 1d | 0d |  | 436h | 7,986.28 |
| 74 | 3.1 | **App Framework Development** | 1d | 2023-09-11 | 2023-09-11 |  | 59d |  |  | 24h | 367.82 |
| 75 | 3.1.1 | **Create UI and structure of app pages** | 1d | 2023-09-11 | 2023-09-11 | 8 | 59d |  | 2D/3D Artist and GUI Designer | 24h | 367.82 |
| 76 | 3.1.1.1 | Implement IOS | 1d | 2023-09-11 | 2023-09-11 |  | 59d | 58d | Junior Developer 1 | 8h | 118.18 |
| 77 | 3.1.1.2 | Implement Android | 1d | 2023-09-11 | 2023-09-11 |  | 59d | 58d | Junior Developer 2 | 8h | 113.8 |
| 78 | 3.2 | **Big cat model page** | 3d | 2023-11-07 | 2023-11-09 | 40 | 1d |  |  | 24h | 402.68 |
| 79 | 3.2.1 | Page layout and tools | 1d | 2023-11-07 | 2023-11-07 |  | 1d | 0d | Lead Developer | 8h | 175.08 |
| 80 | 3.2.2 | integrate lion model animations | 0.5d | 2023-11-08 | 2023-11-08 | 79 | 12d | 0d | Junior Developer 2 | 4h | 56.9 |
| 81 | 3.2.3 | integrate female lion model animations | 0.5d | 2023-11-08 | 2023-11-08 | 80 | 12d | 0d | Junior Developer 2 | 4h | 56.9 |
| 82 | 3.2.4 | integrate tiger model animations | 0.5d | 2023-11-09 | 2023-11-09 | 81 | 12d | 0d | Junior Developer 2 | 4h | 56.9 |
| 83 | 3.2.5 | integrate cheetah model animations | 0.5d | 2023-11-09 | 2023-11-09 | 82 | 12d |  | Junior Developer 2 | 4h | 56.9 |

| ID | WBS | Task | Duration | Start | Finish | Predecessors | Total slack | Free slack | Constraint | Resources | Work | Cost |
| --- | --- | --- | --- | --- | --- | --- | --- | --- | --- | --- | --- | --- |
| 84 | 3.3 | **Videos** | 4.5d | 2023-10-06 | 2023-10-12 |  |  |  |  |  | 28h | 518.15 |
| 85 | 3.3.1 | Create page layout and video player | 1d | 2023-10-06 | 2023-10-06 |  | 37.5d | 0d |  | Lead Developer | 8h | 175.08 |
| 86 | 3.3.2 | Integrate the three videos | 0.5d | 2023-10-09 | 2023-10-09 | 85, 68 | 37.5d | 0d | start no earlier than 2023-10-09 | Junior Developer 1 | 4h | 59.09 |
| 87 | 3.3.3 | Video Playback conversion for mobile | 1d | 2023-10-09 | 2023-10-10 | 86 | 37.5d | 0d | start no earlier than 2023-10-09 | Junior Developer 1; Junior Developer 2 | 8h | 115.99 |
| 88 | 3.3.4 | Test video page | 1d | 2023-10-10 | 2023-10-11 | 87 | 37.5d |  |  | Senori Independent QA 3 | 8h | 168 |
| 89 | 3.4 | **Interactive map page** | 7d | 2023-10-06 | 2023-10-16 | 39 | 34d |  |  |  | 48h | 799.95 |
| 90 | 3.4.1 | Create page and video controls | 1d | 2023-10-06 | 2023-10-06 |  | 34d | 0d | start no earlier than 2023-10-06 | Junior Developer 1 | 8h | 118.18 |
| 91 | 3.4.2 | Integrate models and assets | 2d | 2023-10-09 | 2023-10-11 | 90 | 34d | 0d |  | Junior Developer 2 | 16h | 227.6 |
| 92 | 3.4.3 | Intergrade audio and SFX | 1d | 2023-10-12 | 2023-10-12 | 91 | 34d | 0d |  | Junior Developer 1 | 8h | 118.18 |
| 93 | 3.4.4 | Test Functionality | 2d | 2023-10-13 | 2023-10-16 | 92 | 34d |  |  | Senori Independent QA 1 | 16h | 336 |
| 94 | 3.5 | **Big cats game page** | 30d | 2023-10-16 | 2023-11-24 | 64 | 1d | 0d |  |  | 176h | 3,155.76 |
| 95 | 3.5.1 | Create page and controls | 2d | 2023-10-16 | 2023-10-17 |  | 24d | 0d |  | Junior Developer 1 | 16h | 236.35 |
| 96 | 3.5.2 | Create gameplay code | 5d | 2023-10-18 | 2023-10-24 | 95 | 24d |  |  | Lead Developer | 40h | 875.38 |
| 97 | 3.5.3 | Create Scoring System | 2d | 2023-10-16 | 2023-10-17 |  | 29d |  |  | Junior Developer 2 | 16h | 227.6 |
| 98 | 3.5.4 | Create game physics and AI | 5d | 2023-11-08 | 2023-11-14 | 79 | 1d | 0d |  | Lead Developer | 40h | 875.38 |
| 99 | 3.5.5 | Integrate Assets | 1d | 2023-11-15 | 2023-11-15 | 98 | 1d | 0d |  |  |  |  |
| 100 | 3.5.5.1 | Character | 2d | 2023-11-16 | 2023-11-17 | 99 | 1d | 0d |  | Junior Developer 1 | 16h | 236.35 |
| 101 | 3.5.5.2 | Levels | 5d | 2023-11-20 | 2023-11-24 | 100 | 1d |  |  | Junior Developer 1 | 40h | 590.88 |
| 102 | 3.5.5.3 | Music and SFX | 1d | 2023-10-19 | 2023-10-19 | 61 | 27d | 0d |  | Junior Developer 2 | 8h | 113.8 |
| 103 | 3.5.5.4 | Test Functionality | 3d | 2023-10-20 | 2023-10-24 | 102 | 28d |  |  | Senori Independent QA 3; Senori Independent QA 1 | 48h | 1,008 |
| 104 | 3.6 | **Lion Mascot** | 42d | 2023-10-04 | 2023-11-30 |  | 1d |  |  |  | 56h | 1,040.68 |
| 105 | 3.6.1 | Create Triggers for lion mascot | 2d | 2023-10-04 | 2023-10-05 | 39 | 41d |  |  | Lead Developer | 16h | 350.15 |
| 106 | 3.6.2 | Implement voice lines/text bubbles | 1d | 2023-10-10 | 2023-10-10 |  | 34d | 33d | start no earlier than 2023-10-10 | Junior Developer 1 | 8h | 118.18 |
| 107 | 3.6.3 | Implement in game and model page | 2d | 2023-11-27 | 2023-11-28 | 106, 78, 94 | 1d | 0d |  | Junior Developer 1 | 16h | 236.35 |
| 108 | 3.6.4 | Test functionality | 2d | 2023-11-29 | 2023-11-30 | 107 | 1d |  |  | Senori Independent QA 3 | 16h | 336 |

| ID | WBS | Task | Duration | Start | Finish | Predecessors | Total slack | Free slack | Resources | Work | Cost |
| --- | --- | --- | --- | --- | --- | --- | --- | --- | --- | --- | --- |
| 109 | 3.7 | **Add AR to tha app** | 4d | 2023-11-15 | 2023-11-20 | 40 | 9d |  |  | 32h | 693.23 |
| 110 | 1.3.8.1 | Add buttons for ar | 0.5d | 2023-11-15 | 2023-11-15 | 98 | 9d | 0d | Lead Developer | 4h | 87.54 |
| 111 | 1.3.8.2 | Add meshes through Unity plugin | 2.5d | 2023-11-15 | 2023-11-17 | 110 | 9d | 0d | Lead Developer | 20h | 437.69 |
| 112 | 1.3.8.3 | Test Functionality | 1d | 2023-11-20 | 2023-11-20 | 111 | 9d |  | Senori Independent QA 2 | 8h | 168 |
| 113 | 4 | **Implementation** | 29d | 2023-12-01 | 2024-01-16 | 28, 73 | 0d |  |  | 456h | 9,368.58 |
| 114 | 4.1 | **Technical Testing** | 9d | 2023-12-01 | 2023-12-13 |  | 1d |  |  | 144h | 2,205.97 |
| 115 | 4.1.1 | **IOS testing** | 8d | 2023-12-01 | 2023-12-12 | 76 | 1d |  |  | 72h | 1,120.49 |
| 116 | 4.1.1.1 | Internal alpha testing | 3d | 2023-12-01 | 2023-12-05 |  | 1d | 0d | Junior Developer 1 | 24h | 354.53 |
| 117 | 4.1.1.2 | functional beta testing | 3d | 2023-12-06 | 2023-12-08 | 116 | 1d | 0d | Junior Developer 1 | 24h | 354.53 |
| 118 | 4.1.1.3 | hardware and compatibility testing | 1d | 2023-12-11 | 2023-12-11 | 117 | 1d | 0d | Junior Developer 1 | 8h | 118.18 |
| 119 | 4.1.1.4 | IOS technical sign off | 1d | 2023-12-12 | 2023-12-12 | 118 | 1d | 0d | Junior Developer 1; Lead Developer | 16h | 293.25 |
| 120 | 4.1.2 | **Android testing** | 9d | 2023-12-01 | 2023-12-13 | 77 | 10d | 0d |  | 72h | 1,085.48 |
| 121 | 4.1.2.1 | Internal alpha testing | 3d | 2023-12-01 | 2023-12-05 |  | 11d | 0d | Junior Developer 2 | 24h | 341.4 |
| 122 | 4.1.2.2 | functional beta testing | 3d | 2023-12-06 | 2023-12-08 | 121 | 11d | 0d | Junior Developer 2 | 24h | 341.4 |
| 123 | 4.1.2.3 | hardware and compatibility testing | 1d | 2023-12-11 | 2023-12-11 | 122 | 11d | 1d | Junior Developer 2 | 8h | 113.8 |
| 124 | 4.1.2.4 | Android technical sign off | 1d | 2023-12-13 | 2023-12-13 | 123, 119 | 10d |  | Junior Developer 2; Lead Developer | 16h | 288.88 |
| 125 | 4.2 | **User Testing** | 7d | 2023-12-14 | 2023-12-22 |  | 13d |  |  | 72h | 1,512 |
| 126 | 4.2.1 | **Content testing - various platforms** | 7d | 2023-12-14 | 2023-12-22 | 119, 120 | 13d |  |  | 44h | 924 |
| 127 | 4.2.1.1 | Videos | 0.5d | 2023-12-14 | 2023-12-14 |  | 18d | 0d | Senori Independent QA 1 | 4h | 84 |
| 128 | 4.2.1.2 | Models | 1d | 2023-12-14 | 2023-12-15 | 127 | 18d | 0d | Senori Independent QA 1 | 8h | 168 |
| 129 | 4.2.1.3 | Game | 2d | 2023-12-14 | 2023-12-15 |  | 15d | 0d | Senori Independent QA 2 | 16h | 336 |
| 130 | 4.2.1.4 | AR | 2d | 2023-12-21 | 2023-12-22 |  | 13d |  | Senori Independent QA 3 | 16h | 336 |
| 131 | 4.2.2 | **Functional testing** | 3.5d | 2023-12-15 | 2023-12-20 |  | 15d |  |  | 28h | 588 |
| 132 | 4.2.2.1 | Interactive map | 0.5d | 2023-12-15 | 2023-12-15 | 128 | 18d |  | Senori Independent QA 1 | 4h | 84 |
| 133 | 4.2.2.2 | Learning content | 3d | 2023-12-18 | 2023-12-20 | 129 | 15d |  | Senori Independent QA 2 | 24h | 504 |

| ID | WBS | Task | Type | Duration | Start | Finish | Predecessors | Total slack | Free slack | Constraint | Resources | Work | Cost |
| --- | --- | --- | --- | --- | --- | --- | --- | --- | --- | --- | --- | --- | --- |
| 134 | 4.3 | **Deployment** |  | 12d | 2023-12-14 | 2024-01-04 | 115, 120 | 0d |  |  |  | 32h | 463.95 |
| 135 | 4.3.1 | Submissions and acceptance to apple store |  | 2d | 2024-01-03 | 2024-01-04 | 115 | 0d |  |  | Junior Developer 1 | 16h | 236.35 |
| 136 | 4.3.2 | Submissions and acceptance to google store |  | 2d | 2023-12-14 | 2023-12-15 | 120 | 10d | 0d |  | Junior Developer 2 | 16h | 227.6 |
| 137 | 4.4 | **Document and Archive** |  | 18d | 2023-12-18 | 2024-01-16 |  | 0d |  |  |  | 104h | 2,604.27 |
| 138 | 4.4.1 | **Documents** |  | 11d | 2023-12-18 | 2024-01-05 | 136 | 7d |  |  |  | 88h | 2,254.12 |
| 139 | 4.4.1.1 | Create technical manual |  | 2d | 2023-12-18 | 2023-12-19 |  | 10d | 0d |  | Managing Director; Technical Director | 32h | 831.62 |
| 140 | 4.4.1.2 | Create user manual |  | 3d | 2024-01-03 | 2024-01-05 | 141 | 7d |  | start no earlier than 2024-01-03 | Managing Director; Technical Director | 32h | 831.62 |
| 141 | 4.4.1.3 | FAA for Tech support |  | 3d | 2023-12-20 | 2023-12-22 | 139 | 10d | 3d |  | Technical Director | 24h | 590.88 |
| 142 | 4.4.2 | **Archive** |  | 8d | 2024-01-05 | 2024-01-16 | 134 | 0d |  |  |  | 16h | 350.15 |
| 143 | 4.4.2.1 | Code Archive |  | 1d | 2024-01-05 | 2024-01-15 |  | 0d |  |  | Lead Developer | 8h | 175.08 |
| 144 | 4.4.2.2 | Assets Archive |  | 1d | 2024-01-16 | 2024-01-16 | 143 | 0d |  |  | Lead Developer | 8h | 175.08 |
| 145 | 4.5 | **Support and Updates** |  | 7d | 2024-01-05 | 2024-01-15 | 134 | 1d |  |  |  | 104h | 2,582.38 |
| 146 | 4.5.1 | Process for tech support issues |  | 2d | 2024-01-05 | 2024-01-08 |  | 1d | 0d |  | Technical Director | 16h | 393.92 |
| 147 | 4.5.2 | Plan future updates |  | 4d | 2024-01-09 | 2024-01-12 | 146 | 1d | 0d |  | Managing Director; Technical Director; Lead Developer | 72h | 1,772.65 |
| 148 | 4.5.3 | Post project review meeting |  | 1d | 2024-01-15 | 2024-01-15 | 147 | 1d |  |  | Managing Director; Technical Director | 16h | 415.81 |
| 149 | 1.5 | **Longleat Visit** |  | 104d | 2023-09-06 | 2024-02-02 |  |  |  |  |  | 80h | 1,330.73 |
| 150 | 1.5.1 | Longleat Visit 1 | manual | 1d | 2023-09-06 | 2023-09-06 |  |  |  | start no earlier than 2023-09-06 | Travel; Managing Director | 16h | 266.15 |
| 151 | 1.5.2 | Longleat Visit 2 | manual | 1d | 2023-10-04 | 2023-10-04 |  |  |  | start no earlier than 2023-10-04 | Travel; Managing Director | 16h | 266.15 |
| 152 | 1.5.3 | Longleat Visit 3 | manual | 1d | 2023-11-01 | 2023-11-01 |  |  |  | start no earlier than 2023-11-01 | Travel; Managing Director | 16h | 266.15 |
| 153 | 1.5.4 | Longleat Visit 4 | manual | 1d | 2023-12-06 | 2023-12-06 |  |  |  | start no earlier than 2023-12-06 | Travel; Managing Director | 16h | 266.15 |
| 154 | 1.5.5 | Longleat Visit 5 | manual | 1d | 2024-01-03 | 2024-01-03 |  |  |  | start no earlier than 2024-01-03 | Travel; Managing Director | 16h | 266.15 |
| 155 | 1.6 | **Staff Meeting** |  | 106d | 2023-09-04 | 2024-02-02 |  |  |  |  |  |  | 3,538.26 |
| 156 | 1.6.1 | Staff Meeting | manual | 1h | 2023-09-04 | 2023-09-04 |  |  |  | start no earlier than 2023-09-04 | Staff Meeting |  | 160.83 |
| 157 | 1.6.2 | Staff Meeting | manual | 1h | 2023-09-11 | 2023-09-11 |  |  |  | start no earlier than 2023-09-11 | Staff Meeting |  | 160.83 |
| 158 | 1.6.3 | Staff Meeting | manual | 1h | 2023-09-18 | 2023-09-18 |  |  |  | start no earlier than 2023-09-18 | Staff Meeting |  | 160.83 |
| 159 | 1.6.4 | Staff Meeting | manual | 1h | 2023-09-25 | 2023-09-25 |  |  |  | start no earlier than 2023-09-25 | Staff Meeting |  | 160.83 |
| 160 | 1.6.5 | Staff Meeting | manual | 1h | 2023-10-02 | 2023-10-02 |  |  |  | start no earlier than 2023-10-02 | Staff Meeting |  | 160.83 |
| 161 | 1.6.6 | Staff Meeting | manual | 1h | 2023-10-09 | 2023-10-09 |  |  |  | start no earlier than 2023-10-09 | Staff Meeting |  | 160.83 |
| 162 | 1.6.7 | Staff Meeting | manual | 1h | 2023-10-16 | 2023-10-16 |  |  |  | start no earlier than 2023-10-16 | Staff Meeting |  | 160.83 |
| 163 | 1.6.8 | Staff Meeting | manual | 1h | 2023-10-23 | 2023-10-23 |  |  |  | start no earlier than 2023-10-23 | Staff Meeting |  | 160.83 |
| 164 | 1.6.9 | Staff Meeting | manual | 1h | 2023-10-30 | 2023-10-30 |  |  |  | start no earlier than 2023-10-30 | Staff Meeting |  | 160.83 |
| 165 | 1.6.10 | Staff Meeting | manual | 1h | 2023-11-06 | 2023-11-06 |  |  |  | start no earlier than 2023-11-06 | Staff Meeting |  | 160.83 |
| 166 | 1.6.11 | Staff Meeting | manual | 1h | 2023-11-13 | 2023-11-13 |  |  |  | start no earlier than 2023-11-13 | Staff Meeting |  | 160.83 |
| 167 | 1.6.12 | Staff Meeting | manual | 1h | 2023-11-20 | 2023-11-20 |  |  |  | start no earlier than 2023-11-20 | Staff Meeting |  | 160.83 |
| 168 | 1.6.13 | Staff Meeting | manual | 1h | 2023-11-27 | 2023-11-27 |  |  |  | start no earlier than 2023-11-27 | Staff Meeting |  | 160.83 |
| 169 | 1.6.14 | Staff Meeting | manual | 1h | 2023-12-04 | 2023-12-04 |  |  |  | start no earlier than 2023-12-04 | Staff Meeting |  | 160.83 |
| 170 | 1.6.15 | Staff Meeting | manual | 1h | 2023-12-11 | 2023-12-11 |  |  |  | start no earlier than 2023-12-11 | Staff Meeting |  | 160.83 |
| 171 | 1.6.16 | Staff Meeting | manual | 1h | 2023-12-18 | 2023-12-18 |  |  |  | start no earlier than 2023-12-18 | Staff Meeting |  | 160.83 |
| 172 | 1.6.17 | Staff Meeting | manual | 1h | 2023-12-25 | 2023-12-25 |  |  |  | start no earlier than 2023-12-25 | Staff Meeting |  | 160.83 |
| 173 | 1.6.18 | Staff Meeting | manual | 1h | 2024-01-01 | 2024-01-01 |  |  |  | start no earlier than 2024-01-01 | Staff Meeting |  | 160.83 |
| 174 | 1.6.19 | Staff Meeting | manual | 1h | 2024-01-08 | 2024-01-08 |  |  |  | start no earlier than 2024-01-08 | Staff Meeting |  | 160.83 |
| 175 | 1.6.20 | Staff Meeting | manual | 1h | 2024-01-15 | 2024-01-15 |  |  |  | start no earlier than 2024-01-15 | Staff Meeting |  | 160.83 |
| 176 | 1.6.21 | Staff Meeting | manual | 1h | 2024-01-22 | 2024-01-22 |  |  |  | start no earlier than 2024-01-22 | Staff Meeting |  | 160.83 |
| 177 | 1.6.22 | Staff Meeting | manual | 1h | 2024-01-29 | 2024-01-29 |  |  |  | start no earlier than 2024-01-29 | Staff Meeting |  | 160.83 |

| ID | WBS | Task | Type | Duration | Start | Finish | Predecessors | Total slack | Constraint | Resources | Work | Cost |
| --- | --- | --- | --- | --- | --- | --- | --- | --- | --- | --- | --- | --- |
| 178 | 1.7 | **Budget** |  | 106d | 2023-09-04 | 2024-02-02 |  |  |  |  | 32h | 1,291.01 |
| 179 | 1.7.1 | Budget 1 | manual | 1d | 2023-09-08 | 2023-09-08 |  |  | start no earlier than 2023-09-08 | Financial Assisstant [20%] | 1.6h | 65.64 |
| 180 | 1.7.2 | Budget 2 | manual | 1d | 2023-09-15 | 2023-09-15 |  |  | start no earlier than 2023-09-15 | Financial Assisstant [20%] | 1.6h | 65.64 |
| 181 | 1.7.3 | Budget 3 | manual | 1d | 2023-09-22 | 2023-09-22 |  |  | start no earlier than 2023-09-22 | Financial Assisstant [20%] | 1.6h | 65.64 |
| 182 | 1.7.4 | Budget 4 | manual | 1d | 2023-09-29 | 2023-09-29 |  |  | start no earlier than 2023-09-29 | Financial Assisstant [20%] | 1.6h | 65.64 |
| 183 | 1.7.5 | Budget 5 | manual | 1d | 2023-10-06 | 2023-10-06 |  |  | start no earlier than 2023-10-06 | Financial Assisstant [20%] | 1.6h | 65.64 |
| 184 | 1.7.6 | Budget 6 | manual | 1d | 2023-10-13 | 2023-10-13 |  |  | start no earlier than 2023-10-13 | Financial Assisstant [20%] | 1.6h | 65.64 |
| 185 | 1.7.7 | Budget 7 | manual | 1d | 2023-10-20 | 2023-10-20 |  |  | start no earlier than 2023-10-20 | Financial Assisstant [20%] | 1.6h | 65.64 |
| 186 | 1.7.8 | Budget 8 | manual | 1d | 2023-10-27 | 2023-10-27 |  |  | start no earlier than 2023-10-27 | Financial Assisstant [20%] | 1.6h | 65.64 |
| 187 | 1.7.9 | Budget 9 | manual | 1d | 2023-11-03 | 2023-11-03 |  |  | start no earlier than 2023-11-03 | Financial Assisstant [20%] | 1.6h | 65.64 |
| 188 | 1.7.10 | Budget 10 | manual | 1d | 2023-11-10 | 2023-11-10 |  |  | start no earlier than 2023-11-10 | Financial Assisstant [20%] | 1.6h | 65.64 |
| 189 | 1.7.11 | Budget 11 | manual | 1d | 2023-11-17 | 2023-11-17 |  |  | start no earlier than 2023-11-17 | Financial Assisstant [20%] | 1.6h | 65.64 |
| 190 | 1.7.12 | Budget 12 | manual | 1d | 2023-11-24 | 2023-11-24 |  |  | start no earlier than 2023-11-24 | Financial Assisstant [20%] | 1.6h | 65.64 |
| 191 | 1.7.13 | Budget 13 | manual | 1d | 2023-12-01 | 2023-12-01 |  |  | start no earlier than 2023-12-01 | Financial Assisstant [20%] | 1.6h | 65.64 |
| 192 | 1.7.14 | Budget 14 | manual | 1d | 2023-12-08 | 2023-12-08 |  |  | start no earlier than 2023-12-08 | Financial Assisstant [20%] | 1.6h | 65.64 |
| 193 | 1.7.15 | Budget 15 | manual | 1d | 2023-12-15 | 2023-12-15 |  |  | start no earlier than 2023-12-15 | Financial Assisstant [20%] | 1.6h | 65.64 |
| 194 | 1.7.16 | Budget 16 | manual | 1d | 2023-12-22 | 2023-12-22 |  |  | start no earlier than 2023-12-22 | Financial Assisstant [20%] | 1.6h | 65.64 |
| 195 | 1.7.17 | Budget 17 | manual | 1d | 2023-12-29 | 2023-12-29 |  |  | start no earlier than 2023-12-29 | Financial Assisstant [20%] | 1.6h | 65.64 |
| 196 | 1.7.18 | Budget 18 | manual | 1d | 2024-01-05 | 2024-01-05 |  |  | start no earlier than 2024-01-05 | Financial Assisstant [20%] | 1.6h | 43.76 |
| 197 | 1.7.19 | Budget 19 | manual | 1d | 2024-01-12 | 2024-01-12 |  |  | start no earlier than 2024-01-12 | Financial Assisstant [20%] | 1.6h | 65.64 |
| 198 | 1.7.20 | Budget 20 | manual | 1d | 2024-01-19 | 2024-01-19 |  |  | start no earlier than 2024-01-19 | Financial Assisstant [20%] | 1.6h | 65.64 |
| 199 | 1.7.21 | Budget 21 | manual | 1d | 2024-01-26 | 2024-01-26 |  |  | start no earlier than 2024-01-26 |  |  |  |
| 200 | 1.7.22 | Budget 22 | manual | 1d | 2024-02-02 | 2024-02-02 |  |  | start no earlier than 2024-02-02 |  |  |  |
| 201 | 0 | **Payments** |  | 93d | 2023-09-04 | 2024-01-16 |  | 13d |  |  |  |  |
| 202 | 0 | Start | milestone | 0d | 2023-09-04 | 2023-09-04 |  | 106d |  |  |  |  |
| 203 | 0 | Complete App | milestone | 0d | 2024-01-16 | 2024-01-16 | 113 | 13d |  |  |  |  |
| 204 | 0 | Finnished Asset Creation | milestone | 0d | 2023-11-24 | 2023-11-24 | 28 | 46d |  |  |  |  |
| 205 | 5 | Contengency Time |  | 13d | 2024-01-17 | 2024-02-02 | 113 | 0d | start no earlier than 2024-01-15 |  |  |  |
